# WCM Construction Schedule Template

Schedule from MS Project XML.
WCM

## Calendars

- Standard: Mon-Fri 08:30-12:00, 12:30-17:00; Sat-Sun off. Exceptions (off unless hours are given): 2026-01-01 (New Year's Day 2026), 2026-02-16 (Family Day 2026), 2026-04-03 (Good Friday 2026), 2026-05-18 (Victoria Day 2026), 2026-07-01 (Canada Day 2026), 2026-08-03 (Civic Holiday 2026), 2026-09-07 (Labour Day 2026), 2026-10-12 (Thanksgiving 2026), 2026-12-25 (Christmas Day 2026), 2026-12-28 (Boxing Day 2026 (observed)), 2027-01-01 (New Year's Day 2027), 2027-02-15 (Family Day 2027), 2027-03-26 (Good Friday 2027), 2027-05-24 (Victoria Day 2027), 2027-07-01 (Canada Day 2027), 2027-08-02 (Civic Holiday 2027), 2027-09-06 (Labour Day 2027), 2027-10-11 (Thanksgiving 2027), 2027-12-27 (Christmas Day 2027 (observed)), 2027-12-28 (Boxing Day 2027 (observed)).

## Resources

| Resource |
| --- |
| Earthworks crew |
| Formwork crew |
| Concrete crew |
| Steel erection crew |
| Framing crew |
| Masonry crew |
| Roofing sub |
| Electrical sub |
| Mechanical/Plumbing sub |
| Fire protection sub |
| Drywall & finishes sub |
| Crane |
| Excavator |

## Schedule

| ID | WBS | Task | Duration | Predecessors |
| --- | --- | --- | --- | --- |
| 1 | 1 | **Preconstruction & Permits** |  |  |
| 2 | 1.1 | 00 52 00 - Subcontractor Buyout & Agreements | 10d | 54 |
| 3 | 1.2 | 01 33 00 - Submittals & Shop Drawings | 10d | 2 |
| 4 | 1.3 | 01 41 00 - Permits & Regulatory Approvals | 10d | 54 |
| 5 | 2 | **Mobilization & Site Establishment** |  |  |
| 6 | 2.1 | 01 50 00 - Temporary Facilities & Site Controls | 10d | 4 |
| 7 | 2.2 | 01 56 00 - Temporary Barriers, Hoarding & Fencing | 10d | 6SS |
| 8 | 3 | **Sitework & Earthworks** |  |  |
| 9 | 3.1 | 02 41 00 - Demolition | 10d | 6 |
| 10 | 3.2 | 31 10 00 - Site Clearing | 10d | 9 |
| 11 | 3.3 | 31 23 00 - Excavation & Fill | 10d | 10 |
| 12 | 3.4 | 33 10 00 - Underground Site Services | 10d | 11SS+5d |
| 13 | 4 | **Foundations & Substructure** |  |  |
| 14 | 4.1 | 03 30 00 - Cast-in-Place Concrete - Footings & Foundations | 10d | 11, 3 |
| 15 | 4.2 | 07 11 00 - Foundation Dampproofing & Waterproofing | 10d | 14 |
| 16 | 4.3 | 33 46 00 - Foundation Drainage | 10d | 15SS |
| 17 | 5 | **Superstructure** |  |  |
| 18 | 5.1 | 03 30 00 - Cast-in-Place Concrete - Structure | 10d | 14 |
| 19 | 5.2 | 05 10 00 - Structural Steel Framing | 10d | 18 |
| 20 | 5.3 | 05 30 00 - Metal Decking | 10d | 19SS+3d |
| 21 | 5.4 | 06 10 00 - Rough Carpentry & Framing | 10d | 20 |
| 22 | 6 | **Envelope & Roofing** |  |  |
| 23 | 6.1 | 04 20 00 - Unit Masonry | 10d | 20 |
| 24 | 6.2 | 07 20 00 - Insulation & Air Barrier | 10d | 23SS+5d |
| 25 | 6.3 | 07 40 00 - Exterior Cladding & Siding | 10d | 24SS+5d |
| 26 | 6.4 | 07 50 00 - Membrane Roofing | 10d | 20 |
| 27 | 6.5 | 08 10 00 - Exterior Doors & Frames | 10d | 25 |
| 28 | 6.6 | 08 50 00 - Windows | 10d | 25SS |

| ID | WBS | Task | Duration | Predecessors |
| --- | --- | --- | --- | --- |
| 29 | 7 | **MEP Rough-ins** |  |  |
| 30 | 7.1 | 21 00 00 - Fire Suppression Rough-in | 10d | 21 |
| 31 | 7.2 | 22 00 00 - Plumbing Rough-in | 10d | 30SS |
| 32 | 7.3 | 23 00 00 - HVAC Rough-in | 10d | 30SS |
| 33 | 7.4 | 26 00 00 - Electrical Rough-in | 10d | 30SS |
| 34 | 7.5 | 27 00 00 - Communications & Security Rough-in | 10d | 33SS+5d |
| 35 | 8 | **Interior Finishes** |  |  |
| 36 | 8.1 | 06 40 00 - Millwork & Architectural Woodwork | 10d | 41 |
| 37 | 8.2 | 09 21 00 - Gypsum Board Assemblies | 10d | 28, 33 |
| 38 | 8.3 | 09 30 00 - Tiling | 10d | 37 |
| 39 | 8.4 | 09 50 00 - Ceilings | 10d | 37SS+5d |
| 40 | 8.5 | 09 60 00 - Flooring | 10d | 41 |
| 41 | 8.6 | 09 90 00 - Painting & Coatings | 10d | 37 |
| 42 | 8.7 | 10 00 00 - Specialties & Accessories | 10d | 40 |
| 43 | 8.8 | 22 40 00 - Plumbing Fixtures & Trim | 10d | 41, 38 |
| 44 | 8.9 | 26 50 00 - Lighting & Devices | 10d | 39 |
| 45 | 9 | **External Works & Landscaping** |  |  |
| 46 | 9.1 | 32 10 00 - Paving & Curbs | 10d | 25, 12 |
| 47 | 9.2 | 32 30 00 - Site Improvements & Fencing | 10d | 46SS |
| 48 | 9.3 | 32 90 00 - Landscaping | 10d | 46 |
| 49 | 10 | **Testing, Commissioning & Handover** |  |  |
| 50 | 10.1 | 01 45 00 - Final Inspections & Deficiency Rectification | 10d | 52 |
| 51 | 10.2 | 01 78 00 - Closeout Submittals (O&M, As-Builts, Warranties) | 10d | 50SS |
| 52 | 10.3 | 01 91 00 - Commissioning & Systems Testing | 10d | 43, 44 |

| ID | WBS | Task | Type | Duration | Predecessors |
| --- | --- | --- | --- | --- | --- |
| 53 | 11 | **Milestones** |  |  |  |
| 54 | 11.1 | Notice to Proceed | milestone | 0d |  |
| 55 | 11.2 | Building Permit Issued | milestone | 0d | 4 |
| 56 | 11.3 | Foundations Complete | milestone | 0d | 15, 16 |
| 57 | 11.4 | Structure Topped Out | milestone | 0d | 21 |
| 58 | 11.5 | Building Weathertight | milestone | 0d | 26, 27, 28 |
| 59 | 11.6 | Substantial Performance | milestone | 0d | 50 |
| 60 | 11.7 | Total Completion / Handover | milestone | 0d | 51 |
